# FOPLP 面板式封装

Schedule from a web Gantt chart, 2025-08-04 to 2026-04-20.
Every day is a working day

## Schedule

| ID | WBS | Task | Duration | Start | Finish | Predecessors | Complete | Status |
| --- | --- | --- | --- | --- | --- | --- | --- | --- |
| 2 | 1 | Kickoff | 45d | 2025-08-04 | 2025-09-17 |  | 100% | done |
| 3 | 2 | **Process setup** | 70d | 2025-09-18 | 2025-11-26 |  | 42% |  |
| 4 | 2.1 | Pre-con/MSL | 33d | 2025-09-18 | 2025-10-20 | 2 | 100% | done |
| 5 | 2.2 | 1st TC200 | 9d | 2025-10-20 | 2025-10-28 |  | 100% | done |
| 6 | 2.3 | 1st TC500 | 21d | 2025-10-21 | 2025-11-10 |  |  |  |
| 7 | 2.4 | 1st TC1000 | 37d | 2025-10-21 | 2025-11-26 |  |  |  |
| 8 | 3 | **Pre-qual 1 lot** | 95d | 2025-10-13 | 2026-01-15 |  | 100% |  |
| 9 | 3.1 | FOPLP 8X8 design | 12d | 2025-10-13 | 2025-10-24 |  | 100% | done |
| 10 | 3.2 | Wafer process | 22d | 2025-10-20 | 2025-11-10 |  | 100% |  |
| 11 | 3.3 | FOPLP 8X8 ES Assembly | 36d | 2025-11-11 | 2025-12-16 | 10 | 100% | waiting |
| 12 | 3.4 | TC200 | 14d | 2025-12-17 | 2025-12-30 | 11 | 100% | waiting |
| 13 | 3.5 | TC500 | 30d | 2025-12-17 | 2026-01-15 | 11 | 100% | waiting |
| 14 | 4 | **Formal Qual.** | 171d | 2025-10-27 | 2026-04-15 |  |  |  |
| 15 | 4.1 | Wafer process | 32d | 2025-10-27 | 2025-11-27 |  |  |  |
| 16 | 4.2 | **Assembly (3-FM+2M BSL)** | 94d | 2025-11-28 | 2026-03-01 |  |  |  |
| 17 | 4.2.1 | RDL+CP | 30d | 2025-11-28 | 2025-12-27 |  |  |  |
| 18 | 4.2.2 | FOPLP 8X8 封装 | 45d | 2026-01-16 | 2026-03-01 | 13 |  | waiting |
| 19 | 4.3 | **RE Qual.(3lots)** | 45d | 2026-03-02 | 2026-04-15 |  |  | waiting |
| 20 | 4.3.1 | TC200 | 14d | 2026-03-02 | 2026-03-15 | 18 |  | waiting |
| 21 | 4.3.2 | TC500 | 30d | 2026-03-05 | 2026-04-03 |  |  | waiting |
| 22 | 4.3.3 | TC1000 | 42d | 2026-03-05 | 2026-04-15 |  |  | waiting |
| 23 | 5 | RTP | 5d | 2026-04-16 | 2026-04-20 | 22 |  | waiting |

Notes:
- 9: FOPLP8X8 方案 (背面漏铜和漏Si) 待台达确认
- 10: 3-FM+2M
